# 306gantt (1)

How a schedule from MS Project changed from version to version. A marks actual dates.

## Version 1 (saved 2015-08-05)

Note of the change: adding reference documents

| ID | WBS | Task | Duration | Start | Finish | Predecessors | Total float | Constraint |
| --- | --- | --- | --- | --- | --- | --- | --- | --- |
| 1 |  | Project start | 0d | 2015-07-27 | 2015-07-27 |  |  |  |
| 2 | 2 | **Planning** | 7d | 2015-07-27 | 2015-08-03 |  | 0d |  |
| 3 |  | Requirements elicitation | 2d | 2015-07-27 | 2015-07-28 | 1 | 0d |  |
| 4 |  | Brainstorm design options | 1d | 2015-07-29 | 2015-07-29 | 3 | 0d |  |
| 5 |  | Design tradeoff analysis | 2d | 2015-07-30 | 2015-07-31 | 4 | 0d |  |
| 6 |  | Elaborate design details | 2d | 2015-08-01 | 2015-08-02 | 5 | 0d |  |
| 7 |  | Documentation | 7d | 2015-07-27 | 2015-08-02 | 3SS, 6FF | 0d |  |
| 8 |  | Plan due | 0d | 2015-08-03 | 2015-08-03 | 6, 7 |  |  |
| 9 | 3 | **Implement robot nodes** | 8d? | 2015-08-03 | 2015-08-10 |  | 0d |  |
| 10 |  | Design parent robot class | 1d | 2015-08-03 | 2015-08-03 | 6, 7 | 0d |  |
| 11 |  | Implement child classes for picker and carrier robot | 1d | 2015-08-04 | 2015-08-04 | 10 | 0d |  |
| 12 | 3.3 | **Implement robot behaviors** | 4d? | 2015-08-05 | 2015-08-08 |  | 0d |  |
| 13 |  | Picker robot movement around rows in orchard | 1d? | 2015-08-05 | 2015-08-05 | 11 | 21d |  |
| 14 |  | Carrier robot movement to and from bins | 1d? | 2015-08-05 | 2015-08-05 | 11 | 0d |  |
| 15 |  | Robot detection of static objects in front | 1d | 2015-08-05 | 2015-08-05 | 11 | 0d |  |
| 16 |  | Robots stop moving or spin on the spot if obstacles are detected in front | 2d | 2015-08-06 | 2015-08-07 | 15, 14 | 0d |  |
| 17 |  | Dynamic obstacle detection (e.g. people and animals) in front | 1d | 2015-08-08 | 2015-08-08 | 16 | 0d |  |
| 18 |  | Unit/acceptance testing | 1d? | 2015-08-09 | 2015-08-09 | 17 | 0d |  |
| 19 |  | Documentation | 7d | 2015-08-03 | 2015-08-09 | 10SS, 18FF | 0d |  |
| 20 |  | Robot nodes and environment complete | 1d? | 2015-08-10 | 2015-08-10 | 18, 19, 27, 28 |  | start no earlier than 2015-08-09 |
| 21 | 4 | **Simulate environment** | 7d? | 2015-08-03 | 2015-08-09 |  | 0d |  |
| 22 |  | Create a static bitmap for the orchard | 2d | 2015-08-03 | 2015-08-04 | 6, 7 | 0d |  |
| 23 |  | Create a class for person | 3d | 2015-08-05 | 2015-08-07 | 22 | 0d |  |
| 24 |  | Create a class for animal | 3d | 2015-08-05 | 2015-08-07 | 22 | 0d |  |
| 25 |  | Implement random orchard 'map' generation | 3d | 2015-08-05 | 2015-08-07 | 22 | 0d |  |
| 26 |  | Implement configurable maps and settings from file | 1d? | 2015-08-08 | 2015-08-08 | 25, 23, 24 | 0d |  |
| 27 |  | Unit/acceptance testing | 1d? | 2015-08-09 | 2015-08-09 | 26 | 0d |  |
| 28 |  | Documentation | 7d | 2015-08-03 | 2015-08-09 | 22SS, 27FF | 0d |  |
| 29 |  | Prepare alpha demo | 3d | 2015-08-10 | 2015-08-12 | 18, 19, 27, 28 | 1d |  |
| 30 |  | Deliver Alpha demo | 0d | 2015-08-13 | 2015-08-13 | 29 |  |  |
| 31 | 7 | **User Interface (GUI dashboard)** | 7d? | 2015-08-10 | 2015-08-16 |  | 0d |  |
| 32 |  | Display robot state on GUI | 6d | 2015-08-10 | 2015-08-15 | 27, 28, 18, 19 | 0d |  |
| 33 |  | Display obstacle state on GUI | 6d | 2015-08-10 | 2015-08-15 | 27, 28, 18, 19 | 0d |  |
| 34 |  | Unit/acceptance testing | 1d? | 2015-08-16 | 2015-08-16 | 32, 33 | 0d |  |
| 35 |  | Documentation | 7d | 2015-08-10 | 2015-08-16 | 32SS, 33SS, 34FF | 0d |  |
| 36 | 8 | **Message passing** | 8d? | 2015-08-10 | 2015-08-17 |  | 0d |  |
| 37 |  | Pickers send messages to carriers when bin is full and dropped | 3d | 2015-08-10 | 2015-08-12 | 27, 28, 18, 19 | 0d |  |
| 38 |  | Carriers send messages to pickers when empty bins are dropped | 3d | 2015-08-10 | 2015-08-12 | 27, 28, 18, 19 | 0d |  |
| 39 |  | Robots able to subscribe to topics to receive messages | 3d | 2015-08-10 | 2015-08-12 | 27, 28, 18, 19 | 0d |  |
| 40 |  | Create message files for the above messages | 3d | 2015-08-10 | 2015-08-12 | 27, 28, 18, 19 | 0d |  |
| 41 |  | Maintaining carrier and picker state so the communication is triggered at the right times | 1d | 2015-08-13 | 2015-08-13 | 38, 39, 40, 37 | 0d |  |
| 42 |  | Communication between other robots (eg. Picker to picker, carrier to carrier) | 2d | 2015-08-14 | 2015-08-15 | 41 | 0d |  |
| 43 |  | Unit/acceptance testing | 1d? | 2015-08-16 | 2015-08-16 | 42 | 0d |  |
| 44 |  | Documentation | 7d | 2015-08-10 | 2015-08-16 | 38SS, 39SS, 40SS, 43FF, 37SS | 0d |  |
| 45 |  | GUI and message passing complete | 1d? | 2015-08-17 | 2015-08-17 | 34, 35, 43, 44 |  |  |
| 46 | 9 | **Implement robot interactions** | 8d? | 2015-08-17 | 2015-08-24 |  | 0d |  |
| 47 |  | Robots maintain message memory | 2d | 2015-08-17 | 2015-08-18 | 34, 35, 43, 44 | 0d |  |
| 48 |  | Co-ordinate kiwifruit collection and bin movement | 4d | 2015-08-19 | 2015-08-22 | 47 | 0d |  |
| 49 |  | Unit/acceptance testing | 1d? | 2015-08-23 | 2015-08-23 | 48 | 0d |  |
| 50 |  | Documentation | 7d | 2015-08-17 | 2015-08-23 | 47SS, 49FF | 0d |  |
| 51 |  | Robot interactions complete | 1d? | 2015-08-24 | 2015-08-24 | 49, 50 |  |  |
| 52 |  | Prepare final demo | 3d | 2015-08-24 | 2015-08-26 | 49, 50 | 0d |  |
| 53 |  | Deliver Final demo | 0d | 2015-08-27 | 2015-08-27 | 52 |  |  |
| 55 | 12 | **Team meetings** | 29d | 2015-07-27 | 2015-08-24 |  | 2d |  |
| 56 |  | Team meetings 1 | 1d | 2015-07-27 | 2015-07-27 |  | 30d | start no earlier than 2015-07-27 |
| 57 |  | Team meetings 2 | 1d | 2015-07-30 | 2015-07-30 |  | 27d | start no earlier than 2015-07-30 |
| 58 |  | Team meetings 3 | 1d | 2015-08-03 | 2015-08-03 |  | 23d | start no earlier than 2015-08-03 |
| 59 |  | Team meetings 4 | 1d | 2015-08-06 | 2015-08-06 |  | 20d | start no earlier than 2015-08-06 |
| 60 |  | Team meetings 5 | 1d | 2015-08-10 | 2015-08-10 |  | 16d | start no earlier than 2015-08-10 |
| 61 |  | Team meetings 6 | 1d | 2015-08-13 | 2015-08-13 |  | 13d | start no earlier than 2015-08-13 |
| 62 |  | Team meetings 7 | 1d | 2015-08-17 | 2015-08-17 |  | 9d | start no earlier than 2015-08-17 |
| 63 |  | Team meetings 8 | 1d | 2015-08-20 | 2015-08-20 |  | 6d | start no earlier than 2015-08-20 |
| 64 |  | Team meetings 9 | 1d | 2015-08-24 | 2015-08-24 |  | 2d | start no earlier than 2015-08-24 |

## Version 2 (saved 2015-08-10)

Note of the change: User Manual so far

Last finish stays 2015-08-27. Complete tasks 0 → 16.

Changed:

| ID | Task | Start | Finish | Complete | Total float | Other |
| --- | --- | --- | --- | --- | --- | --- |
| 2 | **Planning** | 2015-07-27 A |  | 0% → 99% |  |  |
| 3 | Requirements elicitation | 2015-07-27 A | 2015-07-28 A | 0% → 100% | 0d → none |  |
| 4 | Brainstorm design options | 2015-07-29 A | 2015-07-29 A | 0% → 100% | 0d → none |  |
| 5 | Design tradeoff analysis | 2015-07-30 A | 2015-07-31 A | 0% → 100% | 0d → none |  |
| 6 | Elaborate design details | 2015-08-01 A | 2015-08-02 A | 0% → 100% | 0d → none |  |
| 7 | Documentation | 2015-07-27 A | 2015-08-02 A | 0% → 100% | 0d → none |  |
| 9 | **Implement robot nodes** | 2015-08-03 A |  | 0% → 44% | 0d → 16d |  |
| 10 | Design parent robot class | 2015-08-03 A | 2015-08-03 A | 0% → 100% | 0d → none |  |
| 11 | Implement child classes for picker and carrier robot | 2015-08-04 A | 2015-08-04 A | 0% → 100% | 0d → none |  |
| 12 | **Implement robot behaviors** | 2015-08-05 A |  | 0% → 38% | 0d → 18d |  |
| 13 | Picker robot movement around rows in orchard | 2015-08-05 A |  | 0% → 50% |  |  |
| 14 | Carrier robot movement to and from bins | 2015-08-05 A |  | 0% → 50% | 0d → 0.5d |  |
| 15 | Robot detection of static objects in front | 2015-08-05 A |  | 0% → 75% | 0d → 0.5d | resources Chang Kon; Guyver; John; Nikhil → Chang Kon; Guyver; John; Nikhil; Lennon |
| 16 | Robots stop moving or spin on the spot if obstacles are detected in front | 2015-08-06 A |  | 0% → 25% | 0d → 0.25d | resources Chang Kon; Guyver; John; Nikhil → Guyver; Nikhil |
| 18 | Unit/acceptance testing | 2015-08-09 A |  | 0% → 25% | 0d → 0.75d |  |
| 19 | Documentation | 2015-08-03 A |  | 0% → 43% | 0d → 0.75d |  |
| 21 | **Simulate environment** | 2015-08-03 A |  | 0% → 48% | 0d → 0.75d |  |
| 22 | Create a static bitmap for the orchard | 2015-08-03 A |  | 0% → 75% | 0d → 0.75d | resources Elliot; Lennon; Paul; Wesley → Wesley |
| 23 | Create a class for person | 2015-08-05 A | 2015-08-07 A | 0% → 100% | 0d → none | resources Elliot; Lennon; Paul; Wesley → John |
| 24 | Create a class for animal | 2015-08-05 A | 2015-08-07 A | 0% → 100% | 0d → none | resources Elliot; Lennon; Paul; Wesley → John |
| 28 | Documentation | 2015-08-03 A |  | 0% → 29% | 0d → 0.75d | resources Elliot; Lennon; Paul; Wesley → Everyone |
| 29 | Prepare alpha demo | 2015-08-10 A |  | 0% → 33% |  |  |
| 31 | **User Interface (GUI dashboard)** | 2015-08-10 A |  | 0% → 40% |  |  |
| 32 | Display robot state on GUI | 2015-08-10 A |  | 0% → 50% | 0d → 0.25d | resources Chang Kon; Guyver; John; Nikhil; Wesley → Chang Kon; John; Paul; Wesley |
| 33 | Display obstacle state on GUI | 2015-08-10 A |  | 0% → 50% | 0d → 0.25d | resources Chang Kon; Guyver; John; Nikhil; Wesley → Chang Kon; John; Paul; Wesley |
| 34 | Unit/acceptance testing | 2015-08-16 A |  | 0% → 25% |  |  |
| 35 | Documentation | 2015-08-10 A |  | 0% → 25% |  |  |
| 36 | **Message passing** | 2015-08-10 A |  | 0% → 45% |  |  |
| 37 | Pickers send messages to carriers when bin is full and dropped | 2015-08-10 A |  | 0% → 75% | 0d → 0.75d | resources Chang Kon; Guyver → Nikhil; Guyver |
| 38 | Carriers send messages to pickers when empty bins are dropped | 2015-08-10 A |  | 0% → 25% | 0d → 0.75d | resources John; Nikhil; Wesley → Nikhil; Guyver |
| 39 | Robots able to subscribe to topics to receive messages | 2015-08-10 A | 2015-08-12 A | 0% → 100% | 0d → none | resources Chang Kon; Guyver; John; Nikhil; Wesley → Chang Kon; Guyver; John; Nikhil |
| 40 | Create message files for the above messages | 2015-08-10 A | 2015-08-12 A | 0% → 100% | 0d → none | resources Chang Kon; Guyver; John; Nikhil; Wesley → Chang Kon; Guyver; John |
| 41 | Maintaining carrier and picker state so the communication is triggered at the right times | 2015-08-13 A |  | 0% → 75% |  | resources Elliot; Lennon; Paul; Wesley → Nikhil; Guyver |
| 44 | Documentation | 2015-08-10 A |  | 0% → 14% |  |  |
| 55 | **Team meetings** | 2015-07-27 A |  | 0% → 56% |  |  |
| 56 | Team meetings 1 | 2015-07-27 A | 2015-07-27 A | 0% → 100% | 30d → none |  |
| 57 | Team meetings 2 | 2015-07-30 A | 2015-07-30 A | 0% → 100% | 27d → none |  |
| 58 | Team meetings 3 | 2015-08-03 A | 2015-08-03 A | 0% → 100% | 23d → none |  |
| 59 | Team meetings 4 | 2015-08-06 A | 2015-08-06 A | 0% → 100% | 20d → none |  |
| 60 | Team meetings 5 | 2015-08-10 A | 2015-08-10 A | 0% → 100% | 16d → none |  |

## Version 3 (saved 2015-08-24)

Note of the change: added updated gantt chart

Last finish stays 2015-08-27. Complete tasks 16 → 37.

Changed:

| ID | Task | Start | Finish | Complete | Total float |
| --- | --- | --- | --- | --- | --- |
| 9 | **Implement robot nodes** |  |  | 44% → 79% | 16d → 15d |
| 12 | **Implement robot behaviors** |  | 2015-08-08 A | 38% → 100% | 18d → none |
| 13 | Picker robot movement around rows in orchard |  | 2015-08-05 A | 50% → 100% | 21d → none |
| 14 | Carrier robot movement to and from bins |  | 2015-08-05 A | 50% → 100% | 0.5d → none |
| 15 | Robot detection of static objects in front |  | 2015-08-05 A | 75% → 100% | 0.5d → none |
| 16 | Robots stop moving or spin on the spot if obstacles are detected in front |  | 2015-08-07 A | 25% → 100% | 0.25d → none |
| 17 | Dynamic obstacle detection (e.g. people and animals) in front | 2015-08-08 A | 2015-08-08 A | 0% → 100% | 0.25d → none |
| 19 | Documentation |  |  | 43% → 75% | 0.75d → 16d |
| 21 | **Simulate environment** |  |  | 48% → 79% | 0.75d → 16d |
| 22 | Create a static bitmap for the orchard |  | 2015-08-04 A | 75% → 100% | 0.75d → none |
| 25 | Implement random orchard 'map' generation | 2015-08-05 A | 2015-08-07 A | 0% → 100% | 0.75d → none |
| 26 | Implement configurable maps and settings from file | 2015-08-08 A | 2015-08-08 A | 0% → 100% | 0.75d → none |
| 27 | Unit/acceptance testing | 2015-08-09 A |  | 0% → 25% | 0.75d → 16d |
| 28 | Documentation |  |  | 29% → 50% | 0.75d → 16d |
| 29 | Prepare alpha demo |  | 2015-08-12 A | 33% → 100% | 1d → none |
| 31 | **User Interface (GUI dashboard)** |  |  | 40% → 79% | 0d → 9d |
| 32 | Display robot state on GUI |  | 2015-08-15 A | 50% → 100% | 0.25d → none |
| 33 | Display obstacle state on GUI |  | 2015-08-15 A | 50% → 100% | 0.25d → none |
| 35 | Documentation |  |  | 25% → 50% | 0d → 9d |
| 36 | **Message passing** |  |  | 45% → 79% | 0d → 8d |
| 37 | Pickers send messages to carriers when bin is full and dropped |  | 2015-08-12 A | 75% → 100% | 0.75d → none |
| 38 | Carriers send messages to pickers when empty bins are dropped |  | 2015-08-12 A | 25% → 100% | 0.75d → none |
| 41 | Maintaining carrier and picker state so the communication is triggered at the right times |  | 2015-08-13 A | 75% → 100% | 0d → none |
| 42 | Communication between other robots (eg. Picker to picker, carrier to carrier) | 2015-08-14 A | 2015-08-15 A | 0% → 100% | 0d → none |
| 43 | Unit/acceptance testing | 2015-08-16 A |  | 0% → 50% | 0d → 9d |
| 44 | Documentation |  |  | 14% → 50% | 0d → 9d |
| 46 | **Implement robot interactions** | 2015-08-17 A |  | 0% → 67% |  |
| 47 | Robots maintain message memory | 2015-08-17 A | 2015-08-18 A | 0% → 100% | 0d → none |
| 48 | Co-ordinate kiwifruit collection and bin movement | 2015-08-19 A | 2015-08-22 A | 0% → 100% | 0d → none |
| 49 | Unit/acceptance testing | 2015-08-23 A |  | 0% → 50% | 0d → 0.75d |
| 50 | Documentation | 2015-08-17 A |  | 0% → 50% | 0d → 0.75d |
| 52 | Prepare final demo | 2015-08-24 A |  | 0% → 25% |  |
| 55 | **Team meetings** |  | 2015-08-24 A | 56% → 100% | 2d → none |
| 61 | Team meetings 6 | 2015-08-13 A | 2015-08-13 A | 0% → 100% | 13d → none |
| 62 | Team meetings 7 | 2015-08-17 A | 2015-08-17 A | 0% → 100% | 9d → none |
| 63 | Team meetings 8 | 2015-08-20 A | 2015-08-20 A | 0% → 100% | 6d → none |
| 64 | Team meetings 9 | 2015-08-24 A | 2015-08-24 A | 0% → 100% | 2d → none |

## Version 4 (saved 2015-08-25)

Note of the change: Merge branch 'documentation' of https://github.com/gdsl/SOFTENG-306-PROJECT-1 into documentation

Last finish stays 2015-08-27. Complete tasks 37 → 48.

Changed:

| ID | Task | Finish | Complete | Total float |
| --- | --- | --- | --- | --- |
| 9 | **Implement robot nodes** |  | 79% → 94% | 15d → 0d |
| 18 | Unit/acceptance testing | 2015-08-09 A | 25% → 100% | 16d → none |
| 19 | Documentation | 2015-08-09 A | 75% → 100% | 16d → none |
| 21 | **Simulate environment** | 2015-08-09 A | 79% → 100% | 16d → none |
| 27 | Unit/acceptance testing | 2015-08-09 A | 25% → 100% | 16d → none |
| 28 | Documentation | 2015-08-09 A | 50% → 100% | 16d → none |
| 31 | **User Interface (GUI dashboard)** | 2015-08-16 A | 79% → 100% | 9d → none |
| 34 | Unit/acceptance testing | 2015-08-16 A | 25% → 100% | 9d → none |
| 35 | Documentation | 2015-08-16 A | 50% → 100% | 9d → none |
| 36 | **Message passing** |  | 79% → 96% | 8d → 0d |
| 43 | Unit/acceptance testing | 2015-08-16 A | 50% → 100% | 9d → none |
| 44 | Documentation | 2015-08-16 A | 50% → 100% | 9d → none |
| 46 | **Implement robot interactions** |  | 67% → 93% |  |
| 49 | Unit/acceptance testing | 2015-08-23 A | 50% → 100% | 0.75d → none |
| 50 | Documentation | 2015-08-23 A | 50% → 100% | 0.75d → none |
| 52 | Prepare final demo | 2015-08-26 A | 25% → 100% | 0d → none |
